Schedule from MS Project, 2023-02-06 to 2023-04-22, status date 2023-04-22, costs in ¥, A marks actual dates.

## Calendars

- 工作日历: Mon-Fri 08:00-12:00, 13:00-17:00; Sat-Sun off. Exceptions (off unless hours are given): 2023-04-15 to 2023-04-16 (加班), 2023-04-22 (加班).

## Resources

| Resource | Rate | Cost per use |
| --- | --- | --- |
| A | 100 |  |
| B | 100 |  |
| C | 100 |  |
| D | 100 |  |
| E | 100 |  |
| F | 100 |  |
| G | 100 |  |
| I | 100 |  |
| H | 100 |  |
| J | 100 |  |
| K | 100 |  |
| L | 100 |  |
| 1 |  | 800 |
| 2 |  | 200 |
| 3 |  | 500 |
| a |  |  |
| b |  |  |
| c |  |  |
| 成本预算 |  |  |
| 工时预算 |  |  |

## Schedule

| ID | WBS | Task | Duration | Start | Finish | Predecessors | Complete | Actual finish | Baseline start | Baseline finish | Baseline duration | Baseline 1 start | Baseline 1 finish | Constraint | Deadline | Resources | Work | Actual work | Cost | Baseline cost | Actual cost |
| --- | --- | --- | --- | --- | --- | --- | --- | --- | --- | --- | --- | --- | --- | --- | --- | --- | --- | --- | --- | --- | --- |
| 1 | 1 | **项目启动** | 15.5d | 2023-02-06 A | 2023-02-27 A |  | 100% |  | 2023-02-06 | 2023-02-24 | 15d | 2023-02-06 | 2023-02-13 |  |  |  | 124h | 124h | 12,400 | 21,600 | 12,400 |
| 2 | 1.1 | 可行性分析 | 8.5d | 2023-02-06 A | 2023-02-16 A |  | 100% |  | 2023-02-06 | 2023-02-15 | 8d | 2023-02-06 | 2023-02-07 |  |  | A | 68h | 68h | 6,800 | 12,800 | 6,800 |
| 3 | 1.2 | 生存期模型选择 | 4d | 2023-02-17 A | 2023-02-27 A | 2 | 100% |  | 2023-02-16 | 2023-02-21 | 4d | 2023-02-08 | 2023-02-08 |  |  | B | 32h | 32h | 3,200 | 6,400 | 3,200 |
| 4 | 1.3 | 项目章程编制 | 3d | 2023-02-22 A | 2023-02-24 A | 3 | 100% |  | 2023-02-22 | 2023-02-24 | 3d | 2023-02-08 | 2023-02-13 |  |  | C | 24h | 24h | 2,400 | 2,400 | 2,400 |
| 5 | 2 | **需求分析** | 8d | 2023-02-28 A | 2023-03-09 A | 4 | 100% |  | 2023-02-25 | 2023-03-09 | 10d | 2023-02-13 | 2023-02-22 |  |  |  | 68h | 68h | 6,800 | 9,600 | 6,800 |
| 6 | 2.1 | 需求获取 | 4d | 2023-02-28 A | 2023-03-03 A |  | 100% |  | 2023-02-27 | 2023-03-01 | 3d | 2023-02-13 | 2023-02-16 | start no earlier than 2023-02-27 |  | D | 32h | 32h | 3,200 | 4,800 | 3,200 |
| 7 | 2.2 | 需求分析和需求编写 | 2.5d | 2023-03-02 A | 2023-03-07 A | 6 | 100% |  | 2023-03-02 | 2023-03-03 | 2d | 2023-02-16 | 2023-02-20 |  |  | E | 20h | 20h | 2,000 | 3,200 | 2,000 |
| 8 | 2.3 | 需求评审 | 1d | 2023-03-08 A | 2023-03-08 A | 7 | 100% |  | 2023-03-06 | 2023-03-06 | 1d | 2023-02-20 | 2023-02-21 |  |  | F | 8h | 8h | 800 | 800 | 800 |
| 9 | 2.4 | wbs分解 | 1d | 2023-03-09 A | 2023-03-09 A | 8 | 100% |  | 2023-03-07 | 2023-03-07 | 1d | 2023-02-21 | 2023-02-22 |  |  | G | 8h | 8h | 800 | 800 | 800 |
| 10 | 3 | **概要设计** | 5d | 2023-03-10 A | 2023-03-16 A | 5 | 100% |  | 2023-03-10 | 2023-03-16 | 5d | 2023-02-22 | 2023-03-01 |  |  |  | 144h | 144h | 14,400 | 8,000 | 14,400 |
| 11 | 3.1 | 架构设计 | 3d | 2023-03-10 A | 2023-03-14 A | 9 | 100% |  | 2023-03-10 | 2023-03-14 | 3d | 2023-02-22 | 2023-02-27 |  |  | C; D; F; G | 96h | 96h | 9,600 | 4,800 | 9,600 |
| 12 | 3.2 | 数据库设计 | 2d | 2023-03-15 A | 2023-03-16 A | 11 | 100% |  | 2023-03-15 | 2023-03-16 | 2d | 2023-02-27 | 2023-03-01 |  |  | C; D; E | 48h | 48h | 4,800 | 3,200 | 4,800 |
| 13 | 4 | **详细设计** | 14d | 2023-03-17 A | 2023-04-05 A | 10 | 100% |  | 2023-03-17 | 2023-04-06 | 14.5d | 2023-03-01 | 2023-03-02 |  | 2023-03-03 |  | 420h | 420h | 42,000 | 14,400 | 42,000 |
| 14 | 4.1 | 注册功能设计 | 4d | 2023-03-17 A | 2023-03-22 A | 12 | 100% |  | 2023-03-17 | 2023-03-17 | 1d | 2023-03-01 | 2023-03-02 |  |  | C; D; K; L | 128h | 128h | 12,800 | 1,600 | 12,800 |
| 15 | 4.2 | **登录功能设计** | 8d | 2023-03-23 A | 2023-04-03 | 14 | 100% | 2023-03-30 | 2023-03-18 | 2023-03-28 | 8d | 2023-03-01 | 2023-03-02 |  |  |  | 204h | 204h | 20,400 | 9,600 | 20,400 |
| 16 | 4.2.1 | 用户名密码登录 | 3d | 2023-03-23 A | 2023-03-27 A | 14 | 100% |  | 2023-03-20 | 2023-03-22 | 3d | 2023-03-01 | 2023-03-02 |  |  | C; D; I; J | 96h | 96h | 9,600 | 4,800 | 9,600 |
| 17 | 4.2.2 | 微信二维码登录 | 3d | 2023-03-28 A | 2023-03-30 A | 16 | 100% |  | 2023-03-23 | 2023-03-27 | 3d | 2023-03-01 | 2023-03-02 | start no earlier than 2023-03-23 |  | C; D; G; H; A | 108h | 108h | 10,800 | 4,800 | 10,800 |
| 18 | 4.3 | 用户管理功能设计 | 1d | 2023-04-04 A | 2023-04-04 A | 15 | 100% |  | 2023-03-29 | 2023-03-29 | 1d | 2023-03-01 | 2023-03-02 | start no earlier than 2023-03-23 |  | C; D; E; F; B | 36h | 36h | 3,600 | 1,600 | 3,600 |
| 19 | 4.4 | 借书功能设计 | 1d | 2023-04-05 A | 2023-04-05 A | 18 | 100% |  | 2023-03-30 | 2023-03-30 | 1d | 2023-03-01 | 2023-03-02 | start no earlier than 2023-03-23 |  | C; D; I; J; K; L; H | 52h | 52h | 5,200 | 1,600 | 5,200 |
| 20 | 5 | **编码实现** | 10d | 2023-04-06 A | 2023-04-19 | 19 | 100% | 2023-04-12 | 2023-03-31 | 2023-04-07 | 6d | 2023-03-02 | 2023-03-03 |  |  |  | 152h | 152h | 15,200 | 8,000 | 15,200 |
| 21 | 5.1 | 注册功能实现 | 1d | 2023-04-06 A | 2023-04-06 A | 19 | 100% |  | 2023-03-31 | 2023-03-31 | 1d | 2023-03-02 | 2023-03-03 |  |  | D; E; A; B | 32h | 32h | 3,200 | 1,600 | 3,200 |
| 22 | 5.2 | **登录功能实现** | 2d | 2023-04-07 A | 2023-04-10 A | 21 | 100% |  | 2023-04-03 | 2023-04-06 | 4d | 2023-03-02 | 2023-03-03 |  |  |  | 72h | 72h | 7,200 | 3,200 | 7,200 |
| 23 | 5.2.1 | 用户名密码登录实现 | 1d | 2023-04-07 A | 2023-04-07 A | 21 | 100% |  | 2023-04-03 | 2023-04-03 | 1d | 2023-03-02 | 2023-03-03 | start no earlier than 2023-04-03 |  | D; E; B; A | 32h | 32h | 3,200 | 1,600 | 3,200 |
| 24 | 5.2.2 | 微信二维码登录实现 | 1d | 2023-04-10 A | 2023-04-10 A | 23 | 100% |  | 2023-04-04 | 2023-04-04 | 1d | 2023-03-02 | 2023-03-03 | start no earlier than 2023-04-04 |  | D; E; C; A; B | 40h | 40h | 4,000 | 1,600 | 4,000 |
| 25 | 5.3 | 用户管理功能实现 | 1d | 2023-04-11 A | 2023-04-11 A | 24 | 100% |  | 2023-04-05 | 2023-04-05 | 1d | 2023-03-02 | 2023-03-03 | start no earlier than 2023-04-05 |  | D; E; A | 24h | 24h | 2,400 | 1,600 | 2,400 |
| 26 | 5.4 | 借书功能设计实现 | 1d | 2023-04-12 A | 2023-04-12 A | 25 | 100% |  | 2023-04-06 | 2023-04-06 | 1d | 2023-03-02 | 2023-03-03 | start no earlier than 2023-04-06 |  | D; E; F | 24h | 24h | 2,400 | 1,600 | 2,400 |

| ID | WBS | Task | Duration | Start | Finish | Predecessors | Complete | Actual finish | Baseline start | Baseline finish | Baseline duration | Baseline 1 start | Baseline 1 finish | Constraint | Resources | Work | Actual work | Cost | Baseline cost | Actual cost |
| --- | --- | --- | --- | --- | --- | --- | --- | --- | --- | --- | --- | --- | --- | --- | --- | --- | --- | --- | --- | --- |
| 27 | 6 | **测试** | 8d | 2023-04-13 A | 2023-04-22 | 26 | 100% | 2023-04-21 | 2023-04-07 | 2023-04-17 | 7d | 2023-03-03 | 2023-03-14 |  |  | 144h | 144h | 14,400 | 14,400 | 14,400 |
| 28 | 6.1 | 单元测试 | 2d | 2023-04-13 A | 2023-04-16 A | 26 | 100% |  | 2023-04-07 | 2023-04-10 | 2d | 2023-03-03 | 2023-03-07 |  | A; B | 32h | 32h | 3,200 | 3,200 | 3,200 |
| 29 | 6.2 | 集成测试 | 2d | 2023-04-17 A | 2023-04-18 A | 28 | 100% |  | 2023-04-11 | 2023-04-12 | 2d | 2023-03-07 | 2023-03-09 |  | I; J | 32h | 32h | 3,200 | 3,200 | 3,200 |
| 30 | 6.3 | 系统测试 | 2d | 2023-04-19 A | 2023-04-20 A | 29 | 100% |  | 2023-04-13 | 2023-04-14 | 2d | 2023-03-09 | 2023-03-13 |  | D; E; C | 48h | 48h | 4,800 | 4,800 | 4,800 |
| 31 | 6.4 | 交付验收 | 1d | 2023-04-21 A | 2023-04-21 A | 30 | 100% |  | 2023-04-17 | 2023-04-17 | 1d | 2023-03-13 | 2023-03-14 | start no later than 2023-06-06 | D; E; A; B | 32h | 32h | 3,200 | 3,200 | 3,200 |
